# Proyecto Graduación

Schedule from MS Project, 2018-07-23 to 2018-10-29, status date 2018-06-20, costs in ₡.
Microsoft

## Calendars

- Estándar: Mon-Fri 09:00-13:00, 15:00-19:00; Sat-Sun off.

## Resources

| Resource | Rate |
| --- | --- |
| SM | 1250 |
| Compra |  |

## Schedule

| ID | WBS | Task | Duration | Start | Finish | Predecessors | Baseline start | Baseline finish | Baseline duration | Total slack | Free slack | Constraint | Resources | Work | Cost | Baseline cost |
| --- | --- | --- | --- | --- | --- | --- | --- | --- | --- | --- | --- | --- | --- | --- | --- | --- |
| 1 | 1 | Síntesis de requerimientos | 0.5d | 2018-07-23 | 2018-07-23 |  | 2018-07-23 | 2018-07-23 | 0.5d | 0d |  | must start on 2018-07-23 | SM | 4h | 5,000 | 5,000 |
| 2 | 2 | **Objetivo 1** | 37.5d | 2018-07-23 | 2018-09-12 |  | 2018-07-23 | 2018-09-05 | 32.5d | 0d |  |  | SM | 870h | 667,500 | 245,000 |
| 3 | 2.1 | Lluvia de ideas sobre el diseño | 0.5d | 2018-07-23 | 2018-07-23 | 1 | 2018-07-23 | 2018-07-23 | 0.5d | 0d |  | must start on 2018-07-23 | SM | 4h | 5,000 | 5,000 |
| 4 | 2.2 | Obtener una lista de especificaciones | 0.5d | 2018-07-24 | 2018-07-24 | 3 |  |  |  | 0d |  | must finish on 2018-07-24 | SM | 4h | 5,000 |  |
| 5 | 2.3 | Efectuar las pruebas de concepto | 4.5d | 2018-07-25 | 2018-07-31 | 4 | 2018-07-24 | 2018-07-30 | 4.5d | 0d |  | must start on 2018-07-25 | SM | 36h | 45,000 | 45,000 |
| 6 | 2.4 | Comprar los componentes | 336h | 2018-08-06 | 2018-08-20 | 5 | 2018-08-06 | 2018-08-20 | 336h | 0d |  | must start on 2018-08-06 | Compra | 336h |  |  |
| 7 | 2.5 | Elaborar el diseño de las esclusas | 7d | 2018-07-31 | 2018-08-09 | 5 | 2018-07-31 | 2018-08-08 | 7d | 15.5d |  |  | SM | 56h | 70,000 | 70,000 |
| 8 | 2.6 | Manufacturar el diseño | 8d | 2018-08-21 | 2018-08-30 | 6 | 2018-08-21 | 2018-08-30 | 8d | 20d | 0d | start no earlier than 2018-08-21 | SM | 64h | 80,000 | 80,000 |
| 9 | 2.7 | Generar el código para la comunicación | 8.75d | 2018-08-31 | 2018-09-12 | 8, 7 | 2018-08-31 | 2018-09-05 | 4d | 20d |  | start no earlier than 2018-07-26 | SM | 70h | 87,500 | 40,000 |
| 10 | 3 | **Objetivo 2** | 28d? | 2018-08-09 | 2018-09-17 |  | 2018-08-09 | 2018-09-17 | 28d? | 6d |  |  |  | 432h | 120,000 | 180,000 |
| 11 | 3.1 | Generar el diseño de las tolvas | 7d | 2018-08-09 | 2018-08-17 | 3 | 2018-08-09 | 2018-08-17 | 7d | 28d | 10d | start no earlier than 2018-08-09 | SM | 56h | 70,000 | 70,000 |
| 12 | 3.2 | Comprar los componentes | 336h | 2018-08-17 | 2018-08-31 |  | 2018-08-17 | 2018-08-31 | 336h | 0d |  | must start on 2018-08-17 | Compra | 336h |  |  |
| 13 | 3.3 | Manufaturar el diseño de las tolvas y otros | 4d | 2018-09-03 | 2018-09-06 | 12, 11 | 2018-09-03 | 2018-09-06 | 4d | 18d | 0d | start no earlier than 2018-09-03 | SM | 32h | 40,000 | 40,000 |
| 14 | 3.4 | Verificar el funcionamiento de todos los componentes | 1d? | 2018-09-07 | 2018-09-07 | 13 | 2018-09-07 | 2018-09-07 | 1d? | 18d | 0d |  | SM | 8h | 10,000 | 10,000 |
| 15 | 3.5 | Ensamblar las componentes | 4d | 2018-09-10 | 2018-09-13 | 14, 12 | 2018-09-10 | 2018-09-13 | 4d | 18d | 0d | start no earlier than 2018-09-10 |  |  |  | 40,000 |
| 16 | 3.6 | Verificar el funcionamiento del subsistema | 2d | 2018-09-14 | 2018-09-17 | 15 | 2018-09-14 | 2018-09-17 | 2d | 18d |  | start no earlier than 2018-09-14 |  |  |  | 20,000 |
| 17 | 4 | **Objetivo 3** | 39d | 2018-08-17 | 2018-10-10 |  | 2018-08-17 | 2018-10-11 | 40d | 0d |  |  |  | 336h |  | 170,000 |
| 18 | 4.1 | Comprar los componentes necesarios | 80h | 2018-08-17 | 2018-08-31 |  | 2018-08-17 | 2018-08-31 | 336h | 0d |  | must start on 2018-08-17 | Compra | 336h |  |  |
| 19 | 4.2 | Programar el funcionamiento de la botonera | 2d | 2018-09-18 | 2018-09-19 | 18 | 2018-09-18 | 2018-09-19 | 2d | 0d |  | start no earlier than 2018-09-18 |  |  |  | 20,000 |
| 20 | 4.3 | Obtener el modelo del transporte de masas. | 1d | 2018-09-20 | 2018-09-20 | 19 | 2018-09-20 | 2018-09-20 | 1d | 0d |  |  |  |  |  | 10,000 |
| 21 | 4.4 | Diseñar el controlador | 1d | 2018-09-21 | 2018-09-21 | 20 | 2018-09-21 | 2018-09-21 | 1d | 0d |  |  |  |  |  | 10,000 |
| 22 | 4.5 | Programar la interfaz sobre la pantalla LCD | 2d | 2018-09-24 | 2018-09-25 | 21 | 2018-09-24 | 2018-09-25 | 2d | 0d |  |  |  |  |  | 20,000 |
| 23 | 4.6 | Implementar el conrolador en la Raspberry | 3d | 2018-09-26 | 2018-09-28 | 22 | 2018-09-26 | 2018-09-28 | 3d | 0d |  |  |  |  |  | 30,000 |
| 24 | 4.7 | Construir los circuitos impresos para los componentes | 4d | 2018-10-01 | 2018-10-04 | 23 | 2018-10-01 | 2018-10-04 | 4d | 0d |  | start no earlier than 2018-09-30 |  |  |  | 40,000 |
| 25 | 4.8 | Construir la caja de protección | 4d | 2018-10-05 | 2018-10-10 | 24 | 2018-10-08 | 2018-10-11 | 4d | 0d |  |  |  |  |  | 40,000 |

| ID | WBS | Task | Duration | Start | Finish | Predecessors | Baseline start | Baseline finish | Baseline duration | Total slack | Baseline cost |
| --- | --- | --- | --- | --- | --- | --- | --- | --- | --- | --- | --- |
| 26 | 5 | **Objetivo 4** | 13d | 2018-10-11 | 2018-10-29 |  | 2018-10-12 | 2018-11-08 | 20d | 0d | 200,000 |
| 27 | 5.1 | Validar el funcionamiento de cada uno de los subsistemas | 3d | 2018-10-11 | 2018-10-15 | 9, 16, 25 | 2018-10-12 | 2018-10-16 | 3d | 0d | 30,000 |
| 28 | 5.2 | Diseñar el experimento estadístico | 3d | 2018-10-16 | 2018-10-18 | 27 | 2018-10-17 | 2018-10-19 | 3d | 0d | 30,000 |
| 29 | 5.3 | Ejecutar el experimento diseñado | 3d | 2018-10-19 | 2018-10-23 | 28 | 2018-10-22 | 2018-10-24 | 3d | 0d | 30,000 |
| 30 | 5.4 | Analizar los datos obtenidos | 4d | 2018-10-24 | 2018-10-29 | 29 | 2018-10-25 | 2018-10-30 | 4d | 0d | 40,000 |
